# planning_kt4

How a schedule from MS Project changed from version to version. A marks actual dates.

## Version 1 (saved 2018-06-04)

Note of the change: Merge remote-tracking branch 'origin/development' into development

| ID | WBS | Task | Duration | Start | Finish | Predecessors | Total float | Constraint |
| --- | --- | --- | --- | --- | --- | --- | --- | --- |
| 1 | 1 | **Volledige applicatie** | 27.5d? | 2018-03-26 09:00 | 2018-05-17 10:45 |  | 2.08d |  |
| 2 | 1.1 | **Kerntaak 1** | 7.17d? | 2018-03-26 09:00 | 2018-04-11 13:45 |  | 2.08d |  |
| 3 | 1.1.1 | **KT1 Werkproces 1.1** | 2.17d | 2018-03-26 09:00 | 2018-03-27 15:00 |  | 2.08d |  |
| 4 |  | Interview/verslag | 4h | 2018-03-26 09:00 | 2018-03-26 13:00 |  | 2.08d | start no earlier than 2018-03-26 08:00 |
| 5 |  | Hernieuwde opdracht | 4h | 2018-03-26 13:00 | 2018-03-27 10:00 | 4 | 2.08d |  |
| 6 |  | Offerte | 5h | 2018-03-27 10:00 | 2018-03-27 15:00 | 5 | 2.08d |  |
| 7 |  | Wireframes | 1h | 2018-03-26 13:00 | 2018-03-26 14:00 | 4 | 3.42d |  |
| 8 | 1.1.2 | **KT1 Werkproces 1.2** | 1.33d | 2018-03-27 15:00 | 2018-03-28 16:00 | 3 | 2.08d |  |
| 9 |  | Planning | 3h | 2018-03-27 15:00 | 2018-03-28 11:00 | 7 | 2.08d |  |
| 10 |  | Plan van aanpak | 5h | 2018-03-28 11:00 | 2018-03-28 16:00 | 9 | 2.08d |  |
| 11 | 1.1.3 | **KT1 Werkproces 1.3** | 0.5d | 2018-03-29 09:00 | 2018-03-29 12:00 | 8 | 2.08d |  |
| 12 |  | Ontwerpdocument/functioneel ontwerp | 1h | 2018-03-29 09:00 | 2018-03-29 10:00 | 10 | 2.08d |  |
| 13 |  | Use Case diagram en Use Case Templates | 3h | 2018-03-29 09:00 | 2018-03-29 12:00 | 6 | 2.08d |  |
| 14 |  | Prototype toelichting volgordelijkheid | 2h | 2018-03-29 10:00 | 2018-03-29 12:00 | 12 | 2.08d |  |
| 15 | 1.1.4 | **KT1 Werkproces 1.4** | 1d | 2018-03-29 12:00 | 2018-04-09 14:45 | 11 | 2.08d |  |
| 16 |  | Ontwerpdocument – Technisch ontwerp | 1h | 2018-03-29 12:00 | 2018-04-09 09:45 | 13 | 2.08d |  |
| 17 |  | Modeldictionary | 2h | 2018-03-29 12:00 | 2018-04-09 10:45 | 14 | 2.25d |  |
| 18 |  | Klassendiagram | 3h | 2018-04-09 11:45 | 2018-04-09 14:45 | 19 | 2.08d |  |
| 19 |  | Datadictionary | 2h | 2018-04-09 09:45 | 2018-04-09 11:45 | 16 | 2.08d |  |
| 20 |  | Sequentiediagrammen | 3h | 2018-04-09 10:45 | 2018-04-09 13:45 | 17 | 2.25d |  |
| 21 | 1.1.5 | **KT1 Werkproces 1.5** | 2.17d? | 2018-04-09 14:45 | 2018-04-11 13:45 | 15 | 2.08d |  |
| 22 |  | Materialenlijst: Hard- en software van de ontwikkelomgeving | 2h | 2018-04-09 14:45 | 2018-04-10 09:45 | 18, 20 | 2.08d |  |
| 23 |  | Back-up procedure | 2h | 2018-04-10 09:45 | 2018-04-10 11:45 | 22 | 2.08d |  |
| 24 |  | Verslag over de installatie, configuratie en testen van de testomgeving | 3h | 2018-04-10 11:45 | 2018-04-10 14:45 | 23, 22 | 2.08d |  |
| 25 | 1.1.5.4 | **Taakverdeling Ontwikkelomgeving** | 1d? | 2018-04-10 14:45 | 2018-04-11 13:45 | 24 | 2.08d |  |
| 26 |  | aanmaken github | 1h | 2018-04-10 14:45 | 2018-04-10 15:45 | 24 | 2.75d |  |
| 27 |  | mappen structuur aanmaken voor de documenten | 1h | 2018-04-10 15:45 | 2018-04-11 09:45 | 26 | 2.75d |  |
| 28 |  | Laravel implementeren | 6h? | 2018-04-10 14:45 | 2018-04-11 13:45 |  | 2.08d |  |
| 29 |  | vue.js in het project zetten en in github | 1h | 2018-04-10 14:45 | 2018-04-10 15:45 | 24 | 2.75d |  |
| 30 |  | development branche aanmaken in github | 1h | 2018-04-10 15:45 | 2018-04-11 09:45 | 29 | 2.75d |  |
| 31 | 1.2 | **Kerntaak 2** | 16d | 2018-04-11 13:45 | 2018-05-11 12:45 | 2 | 9.79d |  |
| 32 | 1.2.1 | **KT2 Werkproces 2.1** | 0.67d | 2018-04-11 13:45 | 2018-04-12 10:45 |  | 9.79d |  |
| 33 |  | Documentatie van het inlezen van gegevens | 2h | 2018-04-11 13:45 | 2018-04-11 15:45 | 30 | 9.79d |  |
| 34 |  | Toelichting op het inrichten van de database | 4h | 2018-04-11 13:45 | 2018-04-12 10:45 | 27 | 9.79d |  |
| 35 |  | De ingerichte database | 2h | 2018-04-11 15:45 | 2018-04-12 10:45 | 33 | 9.79d |  |
| 36 | 1.2.2 | **KT2 Werkproces 2.3** | 9d | 2018-04-12 10:45 | 2018-04-25 09:15 | 32 | 9.79d |  |
| 37 |  | Taakverdeling voor het realiseren van een applicatie | 2h | 2018-04-12 10:45 | 2018-04-13 09:30 | 35 | 12.46d |  |
| 38 |  | Mondelinge toelichting op de gebruikte materialen- en middelenlijst | 3h | 2018-04-12 10:45 | 2018-04-13 10:30 | 34 | 9.79d |  |
| 39 |  | herkansing documenten aanpassen | 22h | 2018-04-13 10:30 | 2018-04-18 11:30 | 38 | 9.79d |  |
| 40 |  | herkansing documenten aanpassen | 4h | 2018-04-13 09:30 | 2018-04-13 13:30 | 37 | 12.46d |  |
| 41 | 1.2.2.5 | **Werkende live webapp/ gespreksverslag hiervan met mogelijke veranderingen** | 8d | 2018-04-13 13:30 | 2018-04-25 09:15 |  | 9.79d |  |
| 42 | 1.2.2.5.1 | **Enquete** | 3.67d | 2018-04-13 13:30 | 2018-04-18 14:30 |  | 9.79d |  |
| 43 | 1.2.2.5.1.1 | **Front-end** | 0.5d | 2018-04-18 11:30 | 2018-04-18 14:30 |  | 9.79d |  |
| 44 |  | Homepagina | 1h | 2018-04-18 11:30 | 2018-04-18 12:30 | 39 | 9.79d |  |
| 45 |  | Bericht achterlaten | 2h | 2018-04-18 12:30 | 2018-04-18 14:30 | 44 | 9.79d |  |
| 46 | 1.2.2.5.1.2 | **Back-end** | 1d | 2018-04-13 13:30 | 2018-04-16 12:30 |  | 12.46d |  |
| 47 |  | Meningen opslaan in database | 4h | 2018-04-13 13:30 | 2018-04-16 10:30 | 40 | 12.46d |  |
| 48 |  | Contactgegevens kunnen achtergelaten worden | 2h | 2018-04-16 10:30 | 2018-04-16 12:30 | 47 | 12.46d |  |
| 49 | 1.2.2.5.2 | **Dashboard** | 7d | 2018-04-16 12:30 | 2018-04-25 09:15 |  | 9.79d |  |
| 50 | 1.2.2.5.2.1 | **Front-end** | 3.33d | 2018-04-16 12:30 | 2018-04-19 11:30 | 46 | 9.96d |  |
| 51 |  | Dashboard menu | 1h | 2018-04-18 14:30 | 2018-04-18 15:30 | 45 | 9.79d |  |
| 52 |  | Login pagina | 1h | 2018-04-18 15:30 | 2018-04-19 09:30 | 51 | 9.79d |  |
| 53 |  | mail overzicht | 2h | 2018-04-19 09:30 | 2018-04-19 11:30 | 52 | 9.79d |  |
| 54 |  | Pagina gegevensoverzicht | 1h | 2018-04-16 12:30 | 2018-04-16 13:30 | 48 | 13.12d |  |
| 55 | 1.2.2.5.2.2 | **Back-end** | 6.83d | 2018-04-16 13:30 | 2018-04-25 09:15 |  | 9.79d |  |
| 56 |  | Data is overzichtelijk te zien over meerdere periodes | 10h | 2018-04-16 13:30 | 2018-04-18 09:30 | 54 | 13.12d |  |
| 57 |  | mail overzicht maken en mails verwijderen | 8h | 2018-04-19 11:30 | 2018-04-23 09:15 | 53 | 9.79d |  |
| 58 |  | Mogelijk in te loggen | 1h | 2018-04-18 09:30 | 2018-04-18 10:30 | 56 | 13.12d |  |
| 59 |  | automatics mail versturen | 10h | 2018-04-18 10:30 | 2018-04-20 10:15 | 58 | 13.12d |  |
| 60 |  | excel export | 14h | 2018-04-23 09:15 | 2018-04-25 09:15 | 57 | 9.79d |  |
| 61 | 1.2.3 | **KT2 Werkproces 2.5** | 4.5d | 2018-04-25 09:15 | 2018-05-09 12:00 | 36 | 9.79d |  |
| 62 |  | Functionele, technische en acceptatie test opstellen | 4h | 2018-04-25 09:15 | 2018-04-25 13:15 | 60, 59 | 9.79d |  |
| 63 |  | Functionele, technische en acceptatie test uitvoeren met conclusie | 2h | 2018-04-25 13:15 | 2018-04-25 15:15 | 62 | 9.79d |  |
| 64 |  | Aanpassingen doorgeven | 20h | 2018-04-25 15:15 | 2018-05-09 11:00 | 63 | 9.79d |  |
| 65 |  | Toelichting van de aanpassingen | 1h | 2018-05-09 11:00 | 2018-05-09 12:00 | 64 | 9.79d |  |
| 66 | 1.2.4 | **KT2 Werkproces 2.6** | 0.83d | 2018-05-09 12:00 | 2018-05-10 10:00 |  | 9.79d |  |
| 67 |  | Voorstel tot optimalisatie | 1h | 2018-05-09 12:00 | 2018-05-09 13:00 | 65 | 9.79d |  |
| 68 | 1.2.4.2 | **Planning voor optimalisatie** | 0.5d | 2018-05-09 13:00 | 2018-05-09 16:00 |  | 9.79d |  |
| 69 |  | kleine aanpassingen | 1h | 2018-05-09 13:00 | 2018-05-09 14:00 | 67 | 9.79d |  |
| 70 |  | nieuw invoer balk voor telefoon nummer in pop-up | 2h | 2018-05-09 14:00 | 2018-05-09 16:00 | 69 | 9.79d |  |

| ID | WBS | Task | Duration | Start | Finish | Predecessors | Total float |
| --- | --- | --- | --- | --- | --- | --- | --- |
| 71 |  | smile zelfde grootte | 30min | 2018-05-09 14:00 | 2018-05-09 14:30 | 69 | 10.04d |
| 72 |  | Documentatie bijwerken na optimalisatie | 1h | 2018-05-10 09:00 | 2018-05-10 10:00 | 70, 71 | 9.79d |
| 73 | 1.2.5 | **KT2 Werkproces 2.7** | 1d | 2018-05-10 10:00 | 2018-05-11 12:45 |  | 9.79d |
| 74 |  | Agenda - notulen | 4h | 2018-05-10 10:00 | 2018-05-11 10:45 | 72 | 9.79d |
| 75 |  | Voorzitter: project planning; Notulist: Projectmap | 1h | 2018-05-11 10:45 | 2018-05-11 11:45 | 74 | 9.79d |
| 76 |  | Evaluatieformulier | 1h | 2018-05-11 11:45 | 2018-05-11 12:45 | 75 | 9.79d |
| 77 | 1.3 | **Kerntaak 3** | 4.33d | 2018-05-11 12:45 | 2018-05-17 10:45 |  | 10.67d |
| 78 | 1.3.1 | **KT3 Werkproces 3.1** | 1.67d | 2018-05-11 12:45 | 2018-05-14 15:45 |  | 10.67d |
| 79 |  | Maak een implementatieplan (technische en organisatorisch) en bespreek dit met de | 10h | 2018-05-11 12:45 | 2018-05-14 15:45 | 76 | 10.67d |
| 80 | 1.3.2 | **KT3 Werkproces 3.3** | 1.67d | 2018-05-14 15:45 | 2018-05-16 11:45 |  | 10.67d |
| 81 |  | Documentatie van het implementeren van de applicatie in de productieomgeving | 10h | 2018-05-14 15:45 | 2018-05-16 11:45 | 79 | 10.67d |
| 82 | 1.3.3 | **KT3 Werkproces 3.4** | 1d | 2018-05-16 11:45 | 2018-05-17 10:45 |  | 10.67d |
| 83 |  | Verzamel, bespreek en leg de gegevens van het implementatietraject in een | 6h | 2018-05-16 11:45 | 2018-05-17 10:45 | 81 | 10.67d |
| 84 | 1.4 | **Kerntaak 4** | 0.67d? | 2018-03-26 09:00 | 2018-03-26 13:00 |  | 37.5d |
| 85 | 1.4.1 | **KT4 Werkproces 4.3** | 0.67d? | 2018-03-26 09:00 | 2018-03-26 13:00 |  | 37.5d |
| 86 |  | Onderzoek samenhang | 4h? | 2018-03-26 09:00 | 2018-03-26 13:00 |  | 37.5d |
| 87 |  | Notulen van overleg | 4h? | 2018-03-26 09:00 | 2018-03-26 13:00 |  | 37.5d |
| 88 |  | Wijzigingen doorvoeren en testen | 4h? | 2018-03-26 09:00 | 2018-03-26 13:00 |  | 37.5d |
| 89 | 1.4.2 | **KT4 Werkproces 4.4** | 0.67d? | 2018-03-26 09:00 | 2018-03-26 13:00 |  | 37.5d |
| 90 |  | Wijzigingsvoorstel | 4h? | 2018-03-26 09:00 | 2018-03-26 13:00 |  | 37.5d |
| 91 |  | Technisch ontwerp | 4h? | 2018-03-26 09:00 | 2018-03-26 13:00 |  | 37.5d |
| 92 |  | Script uitvoeren | 4h? | 2018-03-26 09:00 | 2018-03-26 13:00 |  | 37.5d |
| 93 |  | Resultaat rapporteren | 4h? | 2018-03-26 09:00 | 2018-03-26 13:00 |  | 37.5d |
| 94 | 1.4.3 | **KT4 Werkproces 4.5** | 0.67d? | 2018-03-26 09:00 | 2018-03-26 13:00 |  | 37.5d |
| 95 |  | Overdrachtsdocument | 4h? | 2018-03-26 09:00 | 2018-03-26 13:00 |  | 37.5d |
| 96 |  | Pakket van eisen | 4h? | 2018-03-26 09:00 | 2018-03-26 13:00 |  | 37.5d |
| 97 |  | Testverslag | 4h? | 2018-03-26 09:00 | 2018-03-26 13:00 |  | 37.5d |
| 98 |  | Archiveerplan | 4h? | 2018-03-26 09:00 | 2018-03-26 13:00 |  | 37.5d |
| 99 |  | Gebruikershandleiding | 4h? | 2018-03-26 09:00 | 2018-03-26 13:00 |  | 37.5d |

## Version 2 (saved 2018-06-11)

Note of the change: kt4 inleveren

Last finish stays 2018-05-17.

Changed:

| ID | Task | Finish | Duration | Total float | Other |
| --- | --- | --- | --- | --- | --- |
| 84 | **Kerntaak 4** | 2018-03-26 13:00 → 2018-03-26 16:00 | 0.67d? → 1.17d | 37.5d → 37d | resources none → Tim |
| 85 | **KT4 Werkproces 4.3** | 2018-03-26 13:00 → 2018-03-26 11:00 | 0.67d? → 0.33d | 37.5d → 37.83d |  |
| 86 | Onderzoek samenhang | 2018-03-26 13:00 → 2018-03-26 11:00 | 4h? → 2h | 37.5d → 37.83d |  |
| 87 | Notulen van overleg | 2018-03-26 13:00 → 2018-03-26 10:00 | 4h? → 1h | 37.5d → 38d |  |
| 88 | Wijzigingen doorvoeren en testen | 2018-03-26 13:00 → 2018-03-26 10:00 | 4h? → 1h | 37.5d → 38d |  |
| 89 | **KT4 Werkproces 4.4** | 2018-03-26 13:00 → 2018-03-26 16:00 | 0.67d? → 1.17d | 37.5d → 37d |  |
| 90 | Wijzigingsvoorstel | 2018-03-26 13:00 → 2018-03-26 10:00 | 4h? → 1h | 37.5d → 38d |  |
| 91 | Technisch ontwerp | 2018-03-26 13:00 → 2018-03-26 11:00 | 4h? → 2h | 37.5d → 37.83d |  |
| 92 | Script uitvoeren | 2018-03-26 13:00 → 2018-03-26 16:00 | 4h? → 7h | 37.5d → 37d |  |
| 93 | Resultaat rapporteren | 2018-03-26 13:00 → 2018-03-26 11:00 | 4h? → 2h | 37.5d → 37.83d |  |
| 94 | **KT4 Werkproces 4.5** | 2018-03-26 13:00 → 2018-03-26 11:00 | 0.67d? → 0.33d | 37.5d → 37.83d |  |
| 95 | Overdrachtsdocument | 2018-03-26 13:00 → 2018-03-26 11:00 | 4h? → 2h | 37.5d → 37.83d |  |
| 96 | Pakket van eisen | 2018-03-26 13:00 → 2018-03-26 10:00 | 4h? → 1h | 37.5d → 38d |  |
| 97 | Testverslag | 2018-03-26 13:00 → 2018-03-26 11:00 | 4h? → 2h | 37.5d → 37.83d |  |
| 98 | Archiveerplan | 2018-03-26 13:00 → 2018-03-26 11:00 | 4h? → 2h | 37.5d → 37.83d |  |
| 99 | Gebruikershandleiding | 2018-03-26 13:00 → 2018-03-26 11:00 | 4h? → 2h | 37.5d → 37.83d |  |
